Schedule from MS Project, 2021-11-02 to 2022-01-31, costs in €.

## Calendars

- Estándar: Mon-Fri 09:00-13:00, 15:00-19:00; Sat-Sun off.

## Resources

| Resource | Rate | Cost per use | Notes |
| --- | --- | --- | --- |
| A1 | 30 |  | Analista |
| A2 | 30 |  | Analista |
| D1 | 25 |  | Diseñador |
| D2 | 25 |  | Diseñador |
| DS1 | 20 |  | Desarrollador |
| DS2 | 20 |  | Desarrollador |
| DS3 | 20 |  | Desarrollador |
| DS4 | 20 |  | Desarrollador |
| DS5 | 20 |  | Desarrollador |
| T1 | 25 |  | Tester |
| T2 | 25 |  | Tester |
| LOPD | 30 |  | Experto LOPD |
| AMZN | 2.5 |  | Servidor Amazon |
| Toner |  | 0.4 | Toner |
| Papel |  | 0.01 | Papel |
| Transporte |  |  | Transporte |

## Schedule

| ID | WBS | Task | Type | Duration | Start | Finish | Predecessors | Total slack | Free slack | Constraint | Resources | Work | Cost |
| --- | --- | --- | --- | --- | --- | --- | --- | --- | --- | --- | --- | --- | --- |
| 1 | 1 | **Fase 0** |  | 13d? | 2021-11-02 | 2021-11-18 |  | 0d |  |  |  | 36h | 1,080 |
| 2 | 1.1 | Adquisición de Productos |  | 0.5d? | 2021-11-02 | 2021-11-02 |  | 28.25d | 0d |  | A1 [50%]; A2 [50%] | 4h | 120 |
| 3 | 1.2 | Solicitar Presupuesto INICIO | milestone | 0d | 2021-11-02 | 2021-11-02 | 2 | 0.5d |  |  |  |  |  |
| 4 | 1.3 | Solicitar Presupuesto FIN | milestone | 0d | 2021-11-09 | 2021-11-09 | 3FS+5d | 0d |  | finish no earlier than 2021-11-09 |  |  |  |
| 5 | 1.4 | Seleccionar Proveedor de cada Producto |  | 8h | 2021-11-10 | 2021-11-10 | 4 | 0d |  |  | A1; A2 | 16h | 480 |
| 6 | 1.5 | Instalación y Configuración INICIO | milestone | 0d | 2021-11-10 | 2021-11-10 | 5 | 0d |  |  |  |  |  |
| 7 | 1.6 | Instalación y Configuración FIN | milestone | 0d | 2021-11-17 | 2021-11-17 | 6FS+5d | 0d |  | finish no earlier than 2021-11-17 |  |  |  |
| 8 | 1.7 | Revisión del Equipamiento |  | 1d? | 2021-11-18 | 2021-11-18 | 7 | 0d |  |  | A1; A2 | 16h | 480 |
| 9 | 2 | **Análisis** |  | 13.25d? | 2021-11-19 | 2021-12-08 |  | 0d |  |  |  | 202h | 6,060.82 |
| 10 | 2.1 | Elaborar ERS |  | 6.25d? | 2021-11-19 | 2021-11-29 | 8 | 0d |  |  | A1; A2; Papel [10000%]; Toner [10000%] | 100h | 3,000.41 |
| 11 | 2.2 | Supervisión ERS |  | 1.25d? | 2021-11-29 | 2021-11-30 | 10 | 0d |  |  | LOPD | 10h | 300 |
| 12 | 2.3 | Elaborar Doc. Usuario |  | 3.75d? | 2021-11-30 | 2021-12-06 | 11 | 0d |  |  | A1; A2; Papel [10000%]; Toner [10000%] | 60h | 1,800.41 |
| 13 | 2.4 | Peer Review de Requisitos |  | 16h | 2021-12-06 | 2021-12-08 | 12 | 0d |  |  | A1; A2 | 32h | 960 |
| 14 | 3 | **Diseño** |  | 16.5d? | 2021-12-08 | 2021-12-30 |  | 0d |  |  |  | 464h | 11,600.82 |
| 15 | 3.1 | **Diseño Alto Nivel** |  | 5d? | 2021-12-08 | 2021-12-15 |  | 0d |  |  |  | 160h | 4,000 |
| 16 | 3.1.1 | Elaborar Arquitectura (diseño alto nivel) |  | 5d? | 2021-12-08 | 2021-12-15 | 13 | 0d |  |  | D1; D2 | 80h | 2,000 |
| 17 | 3.1.2 | Diseño BBDD (diseño alto nivel) |  | 5d? | 2021-12-08 | 2021-12-15 | 16SS | 0d |  |  | D1; D2 | 80h | 2,000 |
| 18 | 3.2 | **Diseño Bajo Nivel** |  | 10d? | 2021-12-10 | 2021-12-24 |  | 0d |  |  |  | 240h | 6,000.41 |
| 19 | 3.2.1 | Detalle Componentes (diseño bajo nivel) |  | 10d? | 2021-12-10 | 2021-12-24 | 17SS+5%, 16SS+5% | 0d |  | start no earlier than 2021-11-22 | D1; D2 | 160h | 4,000 |
| 20 | 3.2.2 | Elaborar Doc. Técnico Diseño |  | 5d? | 2021-12-17 | 2021-12-24 | 16SS, 19FF | 0d |  |  | D1; D2; Papel [10000%]; Toner [10000%] | 80h | 2,000.41 |
| 21 | 3.3 | Revisión Técnica de Diseño Software (RDS) |  | 16h | 2021-12-24 | 2021-12-28 | 20 | 0d |  |  | D1; D2 | 32h | 800 |
| 22 | 3.4 | Actualizar Doc. Usuario |  | 2d? | 2021-12-28 | 2021-12-30 | 21 | 0d |  |  | D1; D2; Papel [10000%]; Toner [10000%] | 32h | 800.41 |
| 23 | 4 | **Implementación** |  | 4d? | 2021-12-28 | 2022-01-03 |  | 0d |  |  |  | 264h | 5,280 |
| 24 | 4.1 | Implementar BBDD |  | 1d? | 2021-12-30 | 2021-12-31 | 22 | 20.48d |  |  | DS1; DS2; DS3; DS4; DS5 | 40h | 800 |
| 25 | 4.2 | Implementar Unidades |  | 4d? | 2021-12-28 | 2022-01-03 | 22SS | 0d |  |  | DS1; DS2; DS3; DS4; DS5 | 160h | 3,200 |
| 26 | 4.3 | Documentar Unidades |  | 1.6d? | 2021-12-28 | 2021-12-30 | 25SS | 2.4d |  |  | DS1; DS2; DS3; DS4; DS5 | 64h | 1,280 |

| ID | WBS | Task | Type | Duration | Start | Finish | Predecessors | Total slack | Constraint | Resources | Work | Cost |
| --- | --- | --- | --- | --- | --- | --- | --- | --- | --- | --- | --- | --- |
| 27 | 5 | **Pruebas de Unidad** |  | 2.4d? | 2021-12-28 | 2021-12-31 |  | 1.6d |  |  | 96h | 1,920 |
| 28 | 5.1 | Ejecutar Pruebas de Unidad |  | 2.4d? | 2021-12-28 | 2021-12-31 | 25SS | 1.6d |  | DS1; DS2; DS3; DS4; DS5 | 96h | 1,920 |
| 29 | 6 | **Pruebas de Aceptación** |  | 33.73d? | 2021-11-30 | 2022-01-17 |  | 10d |  |  | 48h | 1,200 |
| 30 | 6.1 | Elaborar Plan Pruebas Aceptación |  | 3d? | 2021-11-30 | 2021-12-03 | 12SS, 11 | 40.73d |  | T1; T2 | 48h | 1,200 |
| 31 | 6.2 | Ejecutar Plan Pruebas Aceptación |  | 24h | 2022-01-12 | 2022-01-17 | 43 | 0d |  |  |  |  |
| 32 | 7 | **Pruebas de Sistema** |  | 18.48d? | 2021-12-15 | 2022-01-10 |  | 14.5d |  |  | 78.15h | 1,950.38 |
| 33 | 7.1 | Elaborar Plan Pruebas Sistema |  | 3d? | 2021-12-15 | 2021-12-20 | 17, 16 | 29.98d |  | T1; T2 | 48h | 1,200 |
| 34 | 7.2 | **Servidor Amazon** |  | 1.88d? | 2022-01-06 | 2022-01-10 |  | 0d |  | AMZN [1%] | 30.15h | 750.38 |
| 35 | 7.2.1 | Ejecutar Plan Pruebas Sistema |  | 1.88d? | 2022-01-06 | 2022-01-10 | 42 | 0d |  | T1; T2 | 30h | 750 |
| 36 | 8 | **Pruebas de Integración** |  | 8.5d? | 2021-12-24 | 2022-01-06 |  | 6d |  |  | 112.2h | 2,800.5 |
| 37 | 8.1 | Elaborar Plan Pruebas Integración |  | 4.5d? | 2021-12-24 | 2021-12-31 | 19 | 20.98d |  | T1; T2 | 72h | 1,800 |
| 38 | 8.2 | **Servidor Amazon** |  | 2.5d? | 2022-01-03 | 2022-01-06 |  | 0d |  | AMZN [1%] | 40.2h | 1,000.5 |
| 39 | 8.2.1 | Ejecutar Plan Pruebas Integración |  | 2.5d? | 2022-01-03 | 2022-01-06 | 28, 26, 25 | 0d |  | T1; T2 | 40h | 1,000 |
| 40 | 9 | **Finalización** |  | 16.98d? | 2022-01-06 | 2022-01-31 |  | 0d |  |  | 212h | 4,880.41 |
| 41 | 9.1 | Test de Usabilidad |  | 8h | 2022-01-06 | 2022-01-07 | 35SS | 0.88d |  |  |  |  |
| 42 | 9.2 | Preparar Paquete de Instalación |  | 0.6d? | 2022-01-06 | 2022-01-06 | 39 | 0d |  | DS1; DS2; DS3; DS4; DS5 | 24h | 480 |
| 43 | 9.3 | Actualizar Doc. Usuario |  | 1.5d? | 2022-01-10 | 2022-01-12 | 35, 41 | 0d |  | D1; D2; Papel [10000%]; Toner [10000%] | 24h | 600.41 |
| 44 | 9.4 | Elaborar Plan Instalación & Formación |  | 1.5d? | 2022-01-17 | 2022-01-18 | 31 | 0d |  | D1; D2 | 24h | 600 |
| 45 | 9.5 | Subcontrata Instalación Infraestructura Cliente INICIO | milestone | 0d | 2022-01-18 | 2022-01-18 | 44 | 0d |  |  |  |  |
| 46 | 9.6 | Subcontrata Instalación Infraestructura Cliente FIN | milestone | 0d | 2022-01-25 | 2022-01-25 | 45FS+40h | 0d | finish no earlier than 2022-01-08 |  |  |  |
| 47 | 9.7 | Instalación de Cliente |  | 1.5d? | 2022-01-25 | 2022-01-27 | 46 | 0d |  | DS1; DS2; DS3; DS4; DS5; Transporte [0.1%] | 60h | 1,600 |
| 48 | 9.8 | Formación |  | 16h | 2022-01-27 | 2022-01-31 | 47 | 0d |  | DS1; DS2; DS3; DS4; DS5 | 80h | 1,600 |
