Schedule from MS Project, 2021-11-03 to 2022-03-17, status date 2021-12-27, costs in €, A marks actual dates.

## Calendars

- Estándar: Mon-Fri 09:00-13:00, 15:00-19:00; Sat-Sun off.

## Resources

| Resource | Rate | Notes |
| --- | --- | --- |
| A1 | 30 | Analista |
| A2 | 30 | Analista |
| D1 | 25 | Diseñador |
| D2 | 25 | Diseñador |
| DS1 | 20 | Desarrollador |
| DS2 | 20 | Desarrollador |
| DS3 | 20 | Desarrollador |
| DS4 | 20 | Desarrollador |
| DS5 | 20 | Desarrollador |
| T1 | 25 | Tester |
| T2 | 25 | Tester |
| LOPD | 30 | Experto LOPD |
| AMZN | 2.5 | Servidor Amazon |
| Toner | 0.4 | Toner |
| Papel | 0.01 | Papel |
| Transporte |  | Transporte |
| DS6 | 15 | Desarrollador |
| DS7 | 15 | Desarrollador |
| D3 | 20 | Diseñador |

## Schedule

| ID | WBS | Task | Type | Duration | Start | Finish | Predecessors | Complete | Baseline start | Baseline finish | Baseline duration | Baseline 1 start | Baseline 1 finish | Resources | Work | Actual work | Cost | Baseline cost | Actual cost |
| --- | --- | --- | --- | --- | --- | --- | --- | --- | --- | --- | --- | --- | --- | --- | --- | --- | --- | --- | --- |
| 1 | 1 | **Fase 0** |  | 14.38d? | 2021-11-03 A | 2021-11-23 A |  | 100% | 2021-11-02 | 2021-11-18 | 12.25d? |  |  |  | 38h | 38h | 13,640 | 13,580 | 13,640 |
| 2 | 1.1 | Adquisición de Productos |  | 0.25d? | 2021-11-03 A | 2021-11-03 A |  | 100% | 2021-11-02 | 2021-11-02 | 0.25d? |  |  | A1; A2 | 4h | 4h | 120 | 120 | 120 |
| 3 | 1.2 | Solicitar Presupuesto INICIO | milestone | 0d | 2021-11-03 A | 2021-11-03 A | 2 | 100% | 2021-11-02 | 2021-11-02 |  |  |  |  |  |  |  |  |  |
| 4 | 1.3 | Solicitar Presupuesto FIN | milestone | 0d | 2021-11-12 A | 2021-11-12 A | 3FS+5d | 100% | 2021-11-09 | 2021-11-09 |  |  |  |  |  |  |  |  |  |
| 5 | 1.4 | Seleccionar Proveedor de cada Producto |  | 9h | 2021-11-12 A | 2021-11-15 A | 4 | 100% | 2021-11-09 | 2021-11-10 | 8h |  |  | A1; A2 | 18h | 18h | 540 | 480 | 540 |
| 6 | 1.5 | Instalación y Configuración INICIO | milestone | 0d | 2021-11-15 A | 2021-11-15 A | 5 | 100% | 2021-11-10 | 2021-11-10 |  |  |  |  |  |  | 6,250 | 6,250 | 6,250 |
| 7 | 1.6 | Instalación y Configuración FIN | milestone | 0d | 2021-11-22 A | 2021-11-22 A | 6FS+5d | 100% | 2021-11-17 | 2021-11-17 |  |  |  |  |  |  | 6,250 | 6,250 | 6,250 |
| 8 | 1.7 | Revisión del Equipamiento |  | 1d? | 2021-11-22 A | 2021-11-23 A | 7 | 100% | 2021-11-17 | 2021-11-18 | 1d? |  |  | A1; A2 | 16h | 16h | 480 | 480 | 480 |
| 9 | 2 | **Análisis** |  | 14.5d? | 2021-11-23 A | 2021-12-13 A |  | 100% | 2021-11-18 | 2021-12-07 | 13.25d? |  |  |  | 214h | 214h | 6,602 | 6,060.82 | 6,602 |
| 10 | 2.1 | Elaborar ERS |  | 7.5d? | 2021-11-23 A | 2021-12-02 A | 8 | 100% | 2021-11-18 | 2021-11-26 | 6.25d? |  |  | A1; A2; Papel [10000%]; Toner [10000%] | 120h | 120h | 3,641 | 3,000.41 | 3,641 |
| 11 | 2.2 | Supervisión ERS |  | 1.25d? | 2021-12-02 A | 2021-12-06 A | 10 | 100% | 2021-11-26 | 2021-11-29 | 1.25d? |  |  | LOPD | 10h | 10h | 400 | 300 | 400 |
| 12 | 2.3 | Elaborar Doc. Usuario |  | 3.25d? | 2021-12-06 A | 2021-12-09 A | 11 | 100% | 2021-11-29 | 2021-12-03 | 3.75d? |  |  | A1; A2; Papel [10000%]; Toner [10000%] | 52h | 52h | 1,601 | 1,800.41 | 1,601 |
| 13 | 2.4 | Peer Review de Requisitos |  | 16h | 2021-12-09 A | 2021-12-13 A | 12 | 100% | 2021-12-03 | 2021-12-07 | 16h |  |  | A1; A2 | 32h | 32h | 960 | 960 | 960 |
| 14 | 3 | **Diseño** |  | 30.38d? | 2021-12-13 A | 2022-01-25 A |  | 100% | 2021-12-07 | 2022-01-17 | 29d? | 2021-12-13 | 2022-01-25 |  | 464h | 464h | 11,477.85 | 11,602.87 | 11,477.84 |
| 15 | 3.1 | **Diseño Alto Nivel** |  | 20.88d? | 2021-12-13 A | 2022-01-11 A |  | 100% | 2021-12-07 | 2022-01-03 | 18.75d? | 2021-12-13 | 2022-01-13 |  | 200h | 200h | 5,021.91 | 5,001.64 | 5,021.91 |
| 16 | 3.1.1 | Elaborar Arquitectura (diseño alto nivel) I |  | 6.25d? | 2021-12-20 A | 2021-12-28 A | 13 | 100% | 2021-12-07 | 2021-12-15 | 6.25d? | 2021-12-20 | 2021-12-28 | D1 [80%] | 40h | 40h | 1,000 | 1,000 | 1,000 |
| 17 | 3.1.2 | Elaborar Doc. Técnico Diseño 1 |  | 6.25d? | 2021-12-20 A | 2021-12-28 A | 16SS | 100% | 2021-12-07 | 2021-12-15 | 6.25d? | 2021-12-20 | 2021-12-28 | D1 [20%]; Papel [1300%]; Toner [1300%] | 10h | 10h | 255.33 | 250.41 | 255.32 |
| 18 | 3.1.3 | Elaborar Arquitectura (diseño alto nivel) II |  | 12.5d? | 2021-12-28 A | 2022-01-11 A | 16 | 100% | 2021-12-15 | 2022-01-03 | 12.5d? | 2021-12-28 | 2022-01-13 | D1 [40%] | 40h | 40h | 1,000 | 1,000 | 1,000 |
| 19 | 3.1.4 | Elaborar Doc. Técnico Diseño 2 |  | 12.5d? | 2021-12-28 A | 2022-01-11 A | 18SS | 100% | 2021-12-15 | 2022-01-03 | 12.5d? | 2021-12-28 | 2022-01-13 | D1 [10%]; Papel [1200%]; Toner [1200%] | 10h | 10h | 255.84 | 250.41 | 255.84 |
| 20 | 3.1.5 | Diseño BBDD (diseño alto nivel) I |  | 6.25d? | 2021-12-13 A | 2021-12-22 A | 13 | 100% | 2021-12-07 | 2021-12-15 | 6.25d? |  |  | D2 [80%] | 40h | 40h | 1,000 | 1,000 | 1,000 |
| 21 | 3.1.6 | Elaborar Doc. Técnico Diseño 3 |  | 6.25d? | 2021-12-13 A | 2021-12-22 A | 20SS | 100% | 2021-12-07 | 2021-12-15 | 6.25d? |  |  | D2 [20%]; Papel [1300%]; Toner [1300%] | 10h | 10h | 255.33 | 250.41 | 255.33 |
| 22 | 3.1.7 | Diseño BBDD (diseño alto nivel) II |  | 12.5d? | 2021-12-22 A | 2022-01-07 A | 20 | 100% | 2021-12-15 | 2022-01-03 | 12.5d? | 2021-12-22 | 2022-01-07 | D2 [40%] | 40h | 40h | 1,000 | 1,000 | 1,000 |
| 23 | 3.1.8 | Elaborar Doc. Técnico Diseño 4 |  | 12.5d? | 2021-12-22 A | 2022-01-07 A | 22SS | 100% | 2021-12-15 | 2022-01-03 | 12.5d? | 2021-12-22 | 2022-01-07 | D2 [10%]; Papel [1200%]; Toner [1200%] | 10h | 10h | 255.41 | 250.41 | 255.41 |
| 24 | 3.2 | **Diseño Bajo Nivel** |  | 16.67d? | 2021-12-28 A | 2022-01-19 A |  | 100% | 2021-12-15 | 2022-01-11 | 18.75d? | 2021-12-28 | 2022-01-19 |  | 200h | 200h | 4,857.27 | 5,000.82 | 4,857.27 |
| 25 | 3.2.1 | Detalle Componentes (diseño bajo nivel) I |  | 14.5d? | 2021-12-28 A | 2022-01-13 A | 20, 16 | 100% | 2021-12-15 | 2022-01-03 | 12.5d? | 2021-12-28 | 2022-01-13 | D1 [40%]; D2 [40%] | 80h | 80h | 2,000 | 2,000 | 2,000 |
| 26 | 3.2.2 | Elaborar Doc. Técnico Diseño 5 |  | 14.5d? | 2021-12-28 A | 2022-01-13 A | 25SS | 100% | 2021-12-15 | 2022-01-03 | 12.5d? | 2021-12-28 | 2022-01-13 | D1 [10%]; D2 [10%]; Papel [2500%]; Toner [2500%] | 20h | 20h | 510.94 | 500.41 | 510.94 |
| 27 | 3.2.3 | Detalle Componentes (diseño bajo nivel) II |  | 4.17d? | 2022-01-13 A | 2022-01-19 A | 25, 18, 22 | 100% | 2022-01-03 | 2022-01-11 | 6.25d? | 2022-01-13 | 2022-01-19 | D1 [80%]; D2 [80%]; D3 [80%] | 80h | 80h | 1,866.67 | 2,000 | 1,866.67 |
| 28 | 3.2.4 | Elaborar Doc. Técnico Diseño 6 |  | 4.17d? | 2022-01-13 A | 2022-01-19 A | 27SS | 100% | 2022-01-03 | 2022-01-11 | 6.25d? | 2022-01-13 | 2022-01-19 | D1 [20%]; D2 [20%]; Papel [2500%]; Toner [2500%]; D3 [20%] | 20h | 20h | 479.67 | 500.41 | 479.67 |
| 29 | 3.3 | Revisión Técnica de Diseño Software (RDS) |  | 16h | 2022-01-19 A | 2022-01-21 A | 27 | 100% | 2022-01-11 | 2022-01-13 | 16h | 2022-01-19 | 2022-01-21 | D1; D2 | 32h | 32h | 800 | 800 | 800 |
| 30 | 3.4 | Actualizar Doc. Usuario |  | 1.33d? | 2022-01-21 A | 2022-01-25 A | 29 | 100% | 2022-01-13 | 2022-01-17 | 2d? | 2022-01-21 | 2022-01-25 | D1; D2; Papel [10000%]; Toner [10000%]; D3 | 32h | 32h | 798.67 | 800.41 | 798.67 |

| ID | WBS | Task | Type | Duration | Start | Finish | Predecessors | Complete | Baseline start | Baseline finish | Baseline duration | Baseline 1 start | Baseline 1 finish | Resources | Work | Actual work | Cost | Baseline cost | Actual cost |
| --- | --- | --- | --- | --- | --- | --- | --- | --- | --- | --- | --- | --- | --- | --- | --- | --- | --- | --- | --- |
| 31 | 4 | **Implementación** |  | 6.43d? | 2022-02-09 A | 2022-02-17 A |  | 100% | 2022-01-17 | 2022-01-28 | 9d? | 2022-01-25 | 2022-02-02 |  | 264h | 264h | 4,890 | 5,280 | 4,889.96 |
| 32 | 4.1 | Implementar BBDD |  | 2.5d? | 2022-02-09 A | 2022-02-11 A | 30 | 100% | 2022-01-17 | 2022-01-24 | 5d? | 2022-01-25 | 2022-01-27 | DS1; DS6 | 40h | 40h | 700 | 800 | 700 |
| 33 | 4.2 | Implementar Unidades I |  | 2.5d | 2022-02-09 A | 2022-02-11 A | 30 | 100% | 2022-01-17 | 2022-01-24 | 5d? | 2022-01-25 | 2022-01-27 | DS2 [50%]; DS3 [50%]; DS4 [50%]; DS5 [50%]; DS7 [50%] | 50h | 50h | 950 | 1,600 | 950 |
| 34 | 4.3 | Implementar Unidades II |  | 3.93d? | 2022-02-11 A | 2022-02-17 A | 33 | 100% | 2022-01-24 | 2022-01-28 | 4d? | 2022-01-27 | 2022-02-02 | DS1 [50%]; DS2 [50%]; DS3 [50%]; DS4 [50%]; DS5 [50%]; DS6 [50%]; DS7 [50%] | 110h | 110h | 2,042.86 | 1,600 | 2,042.83 |
| 35 | 4.4 | Documentar Unidades I |  | 2.5d | 2022-02-09 A | 2022-02-11 A | 33SS | 100% | 2022-01-17 | 2022-01-24 | 5d? | 2022-01-25 | 2022-01-27 | DS2 [20%]; DS3 [20%]; DS4 [20%]; DS5 [20%]; DS7 [20%] | 20h | 20h | 380 | 640 | 380 |
| 36 | 4.5 | Documentar Unidades II |  | 3.93d? | 2022-02-11 A | 2022-02-17 A | 35 | 100% | 2022-01-24 | 2022-01-28 | 4d? | 2022-01-27 | 2022-02-02 | DS1 [20%]; DS2 [20%]; DS3 [20%]; DS4 [20%]; DS5 [20%]; DS6 [20%]; DS7 [20%] | 44h | 44h | 817.14 | 640 | 817.13 |
| 37 | 5 | **Pruebas de Unidad** |  | 6.43d? | 2022-02-09 A | 2022-02-17 A |  | 100% | 2022-01-17 | 2022-01-28 | 9d? | 2022-01-25 | 2022-02-02 |  | 96h | 96h | 1,795.71 | 1,920 | 1,795.7 |
| 38 | 5.1 | Ejecutar Pruebas de Unidad I |  | 2.5d | 2022-02-09 A | 2022-02-11 A | 33SS | 100% | 2022-01-17 | 2022-01-24 | 5d? | 2022-01-25 | 2022-01-27 | DS2 [30%]; DS3 [30%]; DS4 [30%]; DS5 [30%]; DS7 [30%] | 30h | 30h | 570 | 960 | 570 |
| 39 | 5.2 | Ejecutar Pruebas de Unidad II |  | 3.93d? | 2022-02-11 A | 2022-02-17 A | 38 | 100% | 2022-01-24 | 2022-01-28 | 4d? | 2022-01-27 | 2022-02-02 | DS1 [30%]; DS2 [30%]; DS3 [30%]; DS4 [30%]; DS5 [30%]; DS6 [30%]; DS7 [30%] | 66h | 66h | 1,225.71 | 960 | 1,225.7 |
| 40 | 6 | **Pruebas de Aceptación** |  | 63.75d? | 2021-12-06 A | 2022-03-03 A |  | 100% | 2021-11-29 | 2022-02-10 | 53.12d? | 2021-12-06 | 2022-02-15 |  | 72h | 72h | 1,800 | 1,800 | 1,800 |
| 41 | 6.1 | Elaborar Plan Pruebas Aceptación |  | 3d? | 2021-12-06 A | 2021-12-09 A | 12SS, 11 | 100% | 2021-11-29 | 2021-12-02 | 3d? |  |  | T1; T2 | 48h | 48h | 1,200 | 1,200 | 1,200 |
| 42 | 6.2 | Ejecutar Plan Pruebas Aceptación |  | 24h | 2022-02-28 A | 2022-03-03 A | 55, 41 | 100% | 2022-02-07 | 2022-02-10 | 24h | 2022-02-10 | 2022-02-15 | T1 | 24h | 24h | 600 | 600 | 600 |
| 43 | 7 | **Pruebas de Sistema** |  | 33.12d? | 2022-01-11 A | 2022-02-25 A |  | 100% | 2022-01-03 | 2022-02-04 | 24.12d? | 2022-01-13 | 2022-02-09 |  | 78.19h | 78.19h | 1,950.47 | 1,950.47 | 1,950.47 |
| 44 | 7.1 | Elaborar Plan Pruebas Sistema |  | 3d? | 2022-01-11 A | 2022-01-14 A | 22, 18 | 100% | 2022-01-03 | 2022-01-06 | 3d? | 2022-01-13 | 2022-01-18 | T1; T2 | 48h | 48h | 1,200 | 1,200 | 1,200 |
| 45 | 7.2 | **Servidor Amazon** |  | 2.38d? | 2022-02-23 A | 2022-02-25 A |  | 100% | 2022-02-02 | 2022-02-04 | 2.38d? | 2022-02-07 | 2022-02-09 | AMZN [1%] | 30.19h | 30.19h | 750.48 | 750.48 | 750.48 |
| 46 | 7.2.1 | Ejecutar Plan Pruebas Sistema I |  | 1d? | 2022-02-23 A | 2022-02-24 A | 44, 51 | 100% | 2022-02-02 | 2022-02-02 | 1d? | 2022-02-07 | 2022-02-08 | T2 | 8h | 8h | 200 | 200 | 200 |
| 47 | 7.2.2 | Ejecutar Plan Pruebas Sistema II |  | 1.38d? | 2022-02-24 A | 2022-02-25 A | 46 | 100% | 2022-02-03 | 2022-02-04 | 1.38d? | 2022-02-08 | 2022-02-09 | T1; T2 | 22h | 22h | 550 | 550 | 550 |
| 48 | 8 | **Pruebas de Integración** |  | 24.58d? | 2022-01-19 A | 2022-02-23 A |  | 100% | 2022-01-11 | 2022-02-01 | 15.5d? | 2022-01-19 | 2022-02-07 |  | 112.2h | 112.2h | 2,800.5 | 2,800.5 | 2,800.5 |
| 49 | 8.1 | Elaborar Plan Pruebas Integración |  | 4.5d? | 2022-01-19 A | 2022-01-26 A | 27, 28 | 100% | 2022-01-11 | 2022-01-17 | 4.5d? | 2022-01-19 | 2022-01-26 | T1; T2 | 72h | 72h | 1,800 | 1,800 | 1,800 |
| 50 | 8.2 | **Servidor Amazon** |  | 4.07d? | 2022-02-17 A | 2022-02-23 A |  | 100% | 2022-01-28 | 2022-02-01 | 2.5d? | 2022-02-02 | 2022-02-07 | AMZN [1%] | 40.2h | 40.2h | 1,000.5 | 1,000.5 | 1,000.5 |
| 51 | 8.2.1 | Ejecutar Plan Pruebas Integración |  | 4.07d? | 2022-02-17 A | 2022-02-23 A | 39, 36, 34, 49 | 100% | 2022-01-28 | 2022-02-01 | 2.5d? | 2022-02-02 | 2022-02-07 | T1; T2 | 40h | 40h | 1,000 | 1,000 | 1,000 |
| 52 | 9 | **Finalización** |  | 15.88d? | 2022-02-23 A | 2022-03-17 A |  | 100% | 2022-02-02 | 2022-02-24 | 16.88d? | 2022-02-07 | 2022-02-28 |  | 204h | 204h | 8,772 | 9,080.41 | 8,772 |
| 53 | 9.1 | Test de Usabilidad |  | 8h | 2022-02-23 A | 2022-02-24 A | 51 | 100% | 2022-02-02 | 2022-02-02 | 8h | 2022-02-07 | 2022-02-08 | T1 | 8h | 8h | 200 | 200 | 200 |
| 54 | 9.2 | Preparar Paquete de Instalación |  | 0.6d? | 2022-02-23 A | 2022-02-24 A | 51 | 100% | 2022-02-02 | 2022-02-02 | 0.6d? | 2022-02-07 | 2022-02-07 | DS1; DS2; DS3; DS4; DS5 | 24h | 24h | 480 | 480 | 480 |
| 55 | 9.3 | Actualizar Doc. Usuario |  | 1d? | 2022-02-25 A | 2022-02-28 A | 53, 47 | 100% | 2022-02-04 | 2022-02-07 | 1.5d? | 2022-02-09 | 2022-02-10 | D1; D2; Papel [10000%]; Toner [10000%]; D3 | 24h | 24h | 612 | 600.41 | 612 |
| 56 | 9.4 | Elaborar Plan Instalación & Formación |  | 1d? | 2022-03-03 A | 2022-03-04 A | 42 | 100% | 2022-02-10 | 2022-02-14 | 1.5d? | 2022-02-15 | 2022-02-16 | D1; D2; D3 | 24h | 24h | 560 | 600 | 560 |
| 57 | 9.5 | Subcontrata Instalación Infraestructura Cliente INICIO | milestone | 0d | 2022-03-04 A | 2022-03-04 A | 56 | 100% | 2022-02-14 | 2022-02-14 |  | 2022-02-16 | 2022-02-16 |  |  |  | 2,400 | 2,400 | 2,400 |
| 58 | 9.6 | Subcontrata Instalación Infraestructura Cliente FIN | milestone | 0d | 2022-03-11 A | 2022-03-11 A | 57FS+40h | 100% | 2022-02-21 | 2022-02-21 |  | 2022-02-23 | 2022-02-23 |  |  |  | 1,600 | 1,600 | 1,600 |
| 59 | 9.7 | Instalación de Cliente |  | 1.5d? | 2022-03-11 A | 2022-03-15 A | 58 | 100% | 2022-02-21 | 2022-02-22 | 1.5d? | 2022-02-23 | 2022-02-24 | DS1; DS2; DS3; DS4; DS5; Transporte [0.1%]; DS6 | 60h | 60h | 1,640 | 1,600 | 1,640 |
| 60 | 9.8 | Formación |  | 16h | 2022-03-15 A | 2022-03-17 A | 59 | 100% | 2022-02-22 | 2022-02-24 | 16h | 2022-02-24 | 2022-02-28 | DS1; DS2; DS3; DS4; DS5 | 64h | 64h | 1,280 | 1,600 | 1,280 |
