Schedule from MS Project, 2021-11-03 to 2022-02-28, status date 2021-12-27, costs in €, A marks actual dates.

## Calendars

- Estándar: Mon-Fri 09:00-13:00, 15:00-19:00; Sat-Sun off.

## Resources

| Resource | Rate | Notes |
| --- | --- | --- |
| A1 | 30 | Analista |
| A2 | 30 | Analista |
| D1 | 25 | Diseñador |
| D2 | 25 | Diseñador |
| DS1 | 20 | Desarrollador |
| DS2 | 20 | Desarrollador |
| DS3 | 20 | Desarrollador |
| DS4 | 20 | Desarrollador |
| DS5 | 20 | Desarrollador |
| T1 | 25 | Tester |
| T2 | 25 | Tester |
| LOPD | 30 | Experto LOPD |
| AMZN | 2.5 | Servidor Amazon |
| Toner | 0.4 | Toner |
| Papel | 0.01 | Papel |
| Transporte |  | Transporte |
| DS6 | 15 | Desarrollador |
| DS7 | 15 | Desarrollador |
| D3 | 20 | Diseñador |

## Schedule

| ID | WBS | Task | Type | Duration | Start | Finish | Predecessors | Complete | Remaining | Baseline start | Baseline finish | Baseline duration | Baseline 1 start | Baseline 1 finish | Total slack | Free slack | Resources | Work | Actual work | Cost | Baseline cost | Actual cost |
| --- | --- | --- | --- | --- | --- | --- | --- | --- | --- | --- | --- | --- | --- | --- | --- | --- | --- | --- | --- | --- | --- | --- |
| 1 | 1 | **Fase 0** |  | 14.38d? | 2021-11-03 A | 2021-11-23 A |  | 100% |  | 2021-11-02 | 2021-11-18 | 12.25d? |  |  |  |  |  | 38h | 38h | 13,640 | 13,580 | 13,640 |
| 2 | 1.1 | Adquisición de Productos |  | 0.25d? | 2021-11-03 A | 2021-11-03 A |  | 100% |  | 2021-11-02 | 2021-11-02 | 0.25d? |  |  |  |  | A1; A2 | 4h | 4h | 120 | 120 | 120 |
| 3 | 1.2 | Solicitar Presupuesto INICIO | milestone | 0d | 2021-11-03 A | 2021-11-03 A | 2 | 100% |  | 2021-11-02 | 2021-11-02 |  |  |  |  |  |  |  |  |  |  |  |
| 4 | 1.3 | Solicitar Presupuesto FIN | milestone | 0d | 2021-11-12 A | 2021-11-12 A | 3FS+5d | 100% |  | 2021-11-09 | 2021-11-09 |  |  |  |  |  |  |  |  |  |  |  |
| 5 | 1.4 | Seleccionar Proveedor de cada Producto |  | 9h | 2021-11-12 A | 2021-11-15 A | 4 | 100% |  | 2021-11-09 | 2021-11-10 | 8h |  |  |  |  | A1; A2 | 18h | 18h | 540 | 480 | 540 |
| 6 | 1.5 | Instalación y Configuración INICIO | milestone | 0d | 2021-11-15 A | 2021-11-15 A | 5 | 100% |  | 2021-11-10 | 2021-11-10 |  |  |  |  |  |  |  |  | 6,250 | 6,250 | 6,250 |
| 7 | 1.6 | Instalación y Configuración FIN | milestone | 0d | 2021-11-22 A | 2021-11-22 A | 6FS+5d | 100% |  | 2021-11-17 | 2021-11-17 |  |  |  |  |  |  |  |  | 6,250 | 6,250 | 6,250 |
| 8 | 1.7 | Revisión del Equipamiento |  | 1d? | 2021-11-22 A | 2021-11-23 A | 7 | 100% |  | 2021-11-17 | 2021-11-18 | 1d? |  |  |  |  | A1; A2 | 16h | 16h | 480 | 480 | 480 |
| 9 | 2 | **Análisis** |  | 14.5d? | 2021-11-23 A | 2021-12-13 A |  | 100% |  | 2021-11-18 | 2021-12-07 | 13.25d? |  |  |  |  |  | 214h | 214h | 6,602 | 6,060.82 | 6,602 |
| 10 | 2.1 | Elaborar ERS |  | 7.5d? | 2021-11-23 A | 2021-12-02 A | 8 | 100% |  | 2021-11-18 | 2021-11-26 | 6.25d? |  |  |  |  | A1; A2; Papel [10000%]; Toner [10000%] | 120h | 120h | 3,641 | 3,000.41 | 3,641 |
| 11 | 2.2 | Supervisión ERS |  | 1.25d? | 2021-12-02 A | 2021-12-06 A | 10 | 100% |  | 2021-11-26 | 2021-11-29 | 1.25d? |  |  |  |  | LOPD | 10h | 10h | 400 | 300 | 400 |
| 12 | 2.3 | Elaborar Doc. Usuario |  | 3.25d? | 2021-12-06 A | 2021-12-09 A | 11 | 100% |  | 2021-11-29 | 2021-12-03 | 3.75d? |  |  |  |  | A1; A2; Papel [10000%]; Toner [10000%] | 52h | 52h | 1,601 | 1,800.41 | 1,601 |
| 13 | 2.4 | Peer Review de Requisitos |  | 16h | 2021-12-09 A | 2021-12-13 A | 12 | 100% |  | 2021-12-03 | 2021-12-07 | 16h |  |  |  |  | A1; A2 | 32h | 32h | 960 | 960 | 960 |
| 14 | 3 | **Diseño** |  | 30.38d? | 2021-12-13 A | 2022-01-25 |  | 29% | 21.6d? | 2021-12-07 | 2022-01-17 | 29d? | 2021-12-13 | 2022-01-25 | 24.55d |  |  | 464h | 113.5h | 11,462 | 11,602.87 | 2,849.47 |
| 15 | 3.1 | **Diseño Alto Nivel** |  | 22.88d? | 2021-12-13 A | 2022-01-13 |  | 43% | 13.04d? | 2021-12-07 | 2022-01-03 | 18.75d? | 2021-12-13 | 2022-01-13 | 32.05d |  |  | 200h | 113.5h | 5,020.5 | 5,001.64 | 2,849.47 |
| 16 | 3.1.1 | Elaborar Arquitectura (diseño alto nivel) I |  | 6.25d? | 2021-12-20 A | 2021-12-28 | 13 | 96% | 0.25d? | 2021-12-07 | 2021-12-15 | 6.25d? | 2021-12-20 | 2021-12-28 | 0d |  | D1 [80%] | 40h | 38.4h | 1,000 | 1,000 | 960 |
| 17 | 3.1.2 | Elaborar Doc. Técnico Diseño 1 |  | 6.25d? | 2021-12-20 A | 2021-12-28 | 16SS | 96% | 0.25d? | 2021-12-07 | 2021-12-15 | 6.25d? | 2021-12-20 | 2021-12-28 | 44.55d |  | D1 [20%]; Papel [1300%]; Toner [1300%] | 10h | 9.6h | 255.33 | 250.41 | 245.12 |
| 18 | 3.1.3 | Elaborar Arquitectura (diseño alto nivel) II |  | 12.5d? | 2021-12-28 | 2022-01-13 | 16 |  |  | 2021-12-15 | 2022-01-03 | 12.5d? | 2021-12-28 | 2022-01-13 | 0d |  | D1 [40%] | 40h |  | 1,000 | 1,000 |  |
| 19 | 3.1.4 | Elaborar Doc. Técnico Diseño 2 |  | 12.5d? | 2021-12-28 | 2022-01-13 | 18SS |  |  | 2021-12-15 | 2022-01-03 | 12.5d? | 2021-12-28 | 2022-01-13 | 32.05d |  | D1 [10%]; Papel [1200%]; Toner [1200%] | 10h |  | 254.92 | 250.41 |  |
| 20 | 3.1.5 | Diseño BBDD (diseño alto nivel) I |  | 6.25d? | 2021-12-13 A | 2021-12-22 A | 13 | 100% |  | 2021-12-07 | 2021-12-15 | 6.25d? |  |  |  |  | D2 [80%] | 40h | 40h | 1,000 | 1,000 | 1,000 |
| 21 | 3.1.6 | Elaborar Doc. Técnico Diseño 3 |  | 6.25d? | 2021-12-13 A | 2021-12-22 A | 20SS | 100% |  | 2021-12-07 | 2021-12-15 | 6.25d? |  |  |  |  | D2 [20%]; Papel [1300%]; Toner [1300%] | 10h | 10h | 255.33 | 250.41 | 255.33 |
| 22 | 3.1.7 | Diseño BBDD (diseño alto nivel) II |  | 12.5d? | 2021-12-22 A | 2022-01-07 | 20 | 31% | 8.62d? | 2021-12-15 | 2022-01-03 | 12.5d? | 2021-12-22 | 2022-01-07 | 4.12d | 0d | D2 [40%] | 40h | 12.4h | 1,000 | 1,000 | 310 |
| 23 | 3.1.8 | Elaborar Doc. Técnico Diseño 4 |  | 12.5d? | 2021-12-22 A | 2022-01-07 | 22SS | 31% | 8.62d? | 2021-12-15 | 2022-01-03 | 12.5d? | 2021-12-22 | 2022-01-07 | 36.18d |  | D2 [10%]; Papel [1200%]; Toner [1200%] | 10h | 3.1h | 254.92 | 250.41 | 79.03 |
| 24 | 3.2 | **Diseño Bajo Nivel** |  | 16.67d? | 2021-12-28 | 2022-01-19 |  |  |  | 2021-12-15 | 2022-01-11 | 18.75d? | 2021-12-28 | 2022-01-19 | 0d |  |  | 200h |  | 4,853.83 | 5,000.82 |  |
| 25 | 3.2.1 | Detalle Componentes (diseño bajo nivel) I |  | 12.5d? | 2021-12-28 | 2022-01-13 | 20, 16 |  |  | 2021-12-15 | 2022-01-03 | 12.5d? | 2021-12-28 | 2022-01-13 | 0d |  | D1 [40%]; D2 [40%] | 80h |  | 2,000 | 2,000 |  |
| 26 | 3.2.2 | Elaborar Doc. Técnico Diseño 5 |  | 12.5d? | 2021-12-28 | 2022-01-13 | 25SS |  |  | 2021-12-15 | 2022-01-03 | 12.5d? | 2021-12-28 | 2022-01-13 | 32.05d |  | D1 [10%]; D2 [10%]; Papel [2500%]; Toner [2500%] | 20h |  | 510.25 | 500.41 |  |
| 27 | 3.2.3 | Detalle Componentes (diseño bajo nivel) II |  | 4.17d? | 2022-01-13 | 2022-01-19 | 25, 18, 22 |  |  | 2022-01-03 | 2022-01-11 | 6.25d? | 2022-01-13 | 2022-01-19 | 0d |  | D1 [80%]; D2 [80%]; D3 [80%] | 80h |  | 1,866.67 | 2,000 |  |
| 28 | 3.2.4 | Elaborar Doc. Técnico Diseño 6 |  | 4.17d? | 2022-01-13 | 2022-01-19 | 27SS |  |  | 2022-01-03 | 2022-01-11 | 6.25d? | 2022-01-13 | 2022-01-19 | 5.26d | 0d | D1 [20%]; D2 [20%]; Papel [2500%]; Toner [2500%]; D3 [20%] | 20h |  | 476.92 | 500.41 |  |
| 29 | 3.3 | Revisión Técnica de Diseño Software (RDS) |  | 16h | 2022-01-19 | 2022-01-21 | 27 |  |  | 2022-01-11 | 2022-01-13 | 16h | 2022-01-19 | 2022-01-21 | 0d |  | D1; D2 | 32h |  | 800 | 800 |  |
| 30 | 3.4 | Actualizar Doc. Usuario |  | 1.33d? | 2022-01-21 | 2022-01-25 | 29 |  |  | 2022-01-13 | 2022-01-17 | 2d? | 2022-01-21 | 2022-01-25 | 0d |  | D1; D2; Papel [10000%]; Toner [10000%]; D3 | 32h |  | 787.67 | 800.41 |  |

| ID | WBS | Task | Type | Duration | Start | Finish | Predecessors | Complete | Remaining | Baseline start | Baseline finish | Baseline duration | Baseline 1 start | Baseline 1 finish | Total slack | Resources | Work | Actual work | Cost | Baseline cost | Actual cost |
| --- | --- | --- | --- | --- | --- | --- | --- | --- | --- | --- | --- | --- | --- | --- | --- | --- | --- | --- | --- | --- | --- |
| 31 | 4 | **Implementación** |  | 6.43d? | 2022-01-25 | 2022-02-02 |  |  |  | 2022-01-17 | 2022-01-28 | 9d? | 2022-01-25 | 2022-02-02 | 0d |  | 264h |  | 4,890 | 5,280 |  |
| 32 | 4.1 | Implementar BBDD |  | 2.5d? | 2022-01-25 | 2022-01-27 | 30 |  |  | 2022-01-17 | 2022-01-24 | 5d? | 2022-01-25 | 2022-01-27 | 22.05d | DS1; DS6 | 40h |  | 700 | 800 |  |
| 33 | 4.2 | Implementar Unidades I |  | 2.5d | 2022-01-25 | 2022-01-27 | 30 |  |  | 2022-01-17 | 2022-01-24 | 5d? | 2022-01-25 | 2022-01-27 | 0d | DS2 [50%]; DS3 [50%]; DS4 [50%]; DS5 [50%]; DS7 [50%] | 50h |  | 950 | 1,600 |  |
| 34 | 4.3 | Implementar Unidades II |  | 3.93d? | 2022-01-27 | 2022-02-02 | 33 |  |  | 2022-01-24 | 2022-01-28 | 4d? | 2022-01-27 | 2022-02-02 | 0d | DS1 [50%]; DS2 [50%]; DS3 [50%]; DS4 [50%]; DS5 [50%]; DS6 [50%]; DS7 [50%] | 110h |  | 2,042.86 | 1,600 |  |
| 35 | 4.4 | Documentar Unidades I |  | 2.5d | 2022-01-25 | 2022-01-27 | 33SS |  |  | 2022-01-17 | 2022-01-24 | 5d? | 2022-01-25 | 2022-01-27 | 0d | DS2 [20%]; DS3 [20%]; DS4 [20%]; DS5 [20%]; DS7 [20%] | 20h |  | 380 | 640 |  |
| 36 | 4.5 | Documentar Unidades II |  | 3.93d? | 2022-01-27 | 2022-02-02 | 35 |  |  | 2022-01-24 | 2022-01-28 | 4d? | 2022-01-27 | 2022-02-02 | 0d | DS1 [20%]; DS2 [20%]; DS3 [20%]; DS4 [20%]; DS5 [20%]; DS6 [20%]; DS7 [20%] | 44h |  | 817.14 | 640 |  |
| 37 | 5 | **Pruebas de Unidad** |  | 6.43d? | 2022-01-25 | 2022-02-02 |  |  |  | 2022-01-17 | 2022-01-28 | 9d? | 2022-01-25 | 2022-02-02 | 0d |  | 96h |  | 1,795.71 | 1,920 |  |
| 38 | 5.1 | Ejecutar Pruebas de Unidad I |  | 2.5d | 2022-01-25 | 2022-01-27 | 33SS |  |  | 2022-01-17 | 2022-01-24 | 5d? | 2022-01-25 | 2022-01-27 | 0d | DS2 [30%]; DS3 [30%]; DS4 [30%]; DS5 [30%]; DS7 [30%] | 30h |  | 570 | 960 |  |
| 39 | 5.2 | Ejecutar Pruebas de Unidad II |  | 3.93d? | 2022-01-27 | 2022-02-02 | 38 |  |  | 2022-01-24 | 2022-01-28 | 4d? | 2022-01-27 | 2022-02-02 | 0d | DS1 [30%]; DS2 [30%]; DS3 [30%]; DS4 [30%]; DS5 [30%]; DS6 [30%]; DS7 [30%] | 66h |  | 1,225.71 | 960 |  |
| 40 | 6 | **Pruebas de Aceptación** |  | 51.43d? | 2021-12-06 A | 2022-02-15 |  | 50% | 25.71d? | 2021-11-29 | 2022-02-10 | 53.12d? | 2021-12-06 | 2022-02-15 | 0d |  | 72h | 48h | 1,800 | 1,800 | 1,200 |
| 41 | 6.1 | Elaborar Plan Pruebas Aceptación |  | 3d? | 2021-12-06 A | 2021-12-09 A | 12SS, 11 | 100% |  | 2021-11-29 | 2021-12-02 | 3d? |  |  |  | T1; T2 | 48h | 48h | 1,200 | 1,200 | 1,200 |
| 42 | 6.2 | Ejecutar Plan Pruebas Aceptación |  | 24h | 2022-02-10 | 2022-02-15 | 55, 41 |  |  | 2022-02-07 | 2022-02-10 | 24h | 2022-02-10 | 2022-02-15 | 0d | T1 | 24h |  | 600 | 600 |  |
| 43 | 7 | **Pruebas de Sistema** |  | 18.8d? | 2022-01-13 | 2022-02-09 |  |  |  | 2022-01-03 | 2022-02-04 | 24.12d? | 2022-01-13 | 2022-02-09 | 0d |  | 78.19h |  | 1,950.47 | 1,950.47 |  |
| 44 | 7.1 | Elaborar Plan Pruebas Sistema |  | 3d? | 2022-01-13 | 2022-01-18 | 22, 18 |  |  | 2022-01-03 | 2022-01-06 | 3d? | 2022-01-13 | 2022-01-18 | 13.43d | T1; T2 | 48h |  | 1,200 | 1,200 |  |
| 45 | 7.2 | **Servidor Amazon** |  | 2.38d? | 2022-02-07 | 2022-02-09 |  |  |  | 2022-02-02 | 2022-02-04 | 2.38d? | 2022-02-07 | 2022-02-09 | 0d | AMZN [1%] | 30.19h |  | 750.48 | 750.48 |  |
| 46 | 7.2.1 | Ejecutar Plan Pruebas Sistema I |  | 1d? | 2022-02-07 | 2022-02-08 | 44, 51 |  |  | 2022-02-02 | 2022-02-02 | 1d? | 2022-02-07 | 2022-02-08 | 0d | T2 | 8h |  | 200 | 200 |  |
| 47 | 7.2.2 | Ejecutar Plan Pruebas Sistema II |  | 1.38d? | 2022-02-08 | 2022-02-09 | 46 |  |  | 2022-02-03 | 2022-02-04 | 1.38d? | 2022-02-08 | 2022-02-09 | 0d | T1; T2 | 22h |  | 550 | 550 |  |
| 48 | 8 | **Pruebas de Integración** |  | 12.26d? | 2022-01-19 | 2022-02-07 |  |  |  | 2022-01-11 | 2022-02-01 | 15.5d? | 2022-01-19 | 2022-02-07 | 0d |  | 112.2h |  | 2,800.5 | 2,800.5 |  |
| 49 | 8.1 | Elaborar Plan Pruebas Integración |  | 4.5d? | 2022-01-19 | 2022-01-26 | 27, 28 |  |  | 2022-01-11 | 2022-01-17 | 4.5d? | 2022-01-19 | 2022-01-26 | 5.26d | T1; T2 | 72h |  | 1,800 | 1,800 |  |
| 50 | 8.2 | **Servidor Amazon** |  | 2.5d? | 2022-02-02 | 2022-02-07 |  |  |  | 2022-01-28 | 2022-02-01 | 2.5d? | 2022-02-02 | 2022-02-07 | 0d | AMZN [1%] | 40.2h |  | 1,000.5 | 1,000.5 |  |
| 51 | 8.2.1 | Ejecutar Plan Pruebas Integración |  | 2.5d? | 2022-02-02 | 2022-02-07 | 39, 36, 34, 49 |  |  | 2022-01-28 | 2022-02-01 | 2.5d? | 2022-02-02 | 2022-02-07 | 0d | T1; T2 | 40h |  | 1,000 | 1,000 |  |
| 52 | 9 | **Finalización** |  | 15.62d? | 2022-02-07 | 2022-02-28 |  |  |  | 2022-02-02 | 2022-02-24 | 16.88d? | 2022-02-07 | 2022-02-28 | 0d |  | 220h |  | 9,071 | 9,080.41 |  |
| 53 | 9.1 | Test de Usabilidad |  | 8h | 2022-02-07 | 2022-02-08 | 51 |  |  | 2022-02-02 | 2022-02-02 | 8h | 2022-02-07 | 2022-02-08 | 1.38d | T1 | 8h |  | 200 | 200 |  |
| 54 | 9.2 | Preparar Paquete de Instalación |  | 0.6d? | 2022-02-07 | 2022-02-07 | 51 |  |  | 2022-02-02 | 2022-02-02 | 0.6d? | 2022-02-07 | 2022-02-07 | 15.03d | DS1; DS2; DS3; DS4; DS5 | 24h |  | 480 | 480 |  |
| 55 | 9.3 | Actualizar Doc. Usuario |  | 1d? | 2022-02-09 | 2022-02-10 | 53, 47 |  |  | 2022-02-04 | 2022-02-07 | 1.5d? | 2022-02-09 | 2022-02-10 | 0d | D1; D2; Papel [10000%]; Toner [10000%]; D3 | 24h |  | 601 | 600.41 |  |
| 56 | 9.4 | Elaborar Plan Instalación & Formación |  | 1d? | 2022-02-15 | 2022-02-16 | 42 |  |  | 2022-02-10 | 2022-02-14 | 1.5d? | 2022-02-15 | 2022-02-16 | 0d | D1; D2; D3 | 24h |  | 560 | 600 |  |
| 57 | 9.5 | Subcontrata Instalación Infraestructura Cliente INICIO | milestone | 0d | 2022-02-16 | 2022-02-16 | 56 |  |  | 2022-02-14 | 2022-02-14 |  | 2022-02-16 | 2022-02-16 | 0d |  |  |  | 2,400 | 2,400 |  |
| 58 | 9.6 | Subcontrata Instalación Infraestructura Cliente FIN | milestone | 0d | 2022-02-23 | 2022-02-23 | 57FS+40h |  |  | 2022-02-21 | 2022-02-21 |  | 2022-02-23 | 2022-02-23 | 0d |  |  |  | 1,600 | 1,600 |  |
| 59 | 9.7 | Instalación de Cliente |  | 1.25d? | 2022-02-23 | 2022-02-24 | 58 |  |  | 2022-02-21 | 2022-02-22 | 1.5d? | 2022-02-23 | 2022-02-24 | 0d | DS1; DS2; DS3; DS4; DS5; Transporte [0.1%]; DS6 | 60h |  | 1,630 | 1,600 |  |
| 60 | 9.8 | Formación |  | 16h | 2022-02-24 | 2022-02-28 | 59 |  |  | 2022-02-22 | 2022-02-24 | 16h | 2022-02-24 | 2022-02-28 | 0d | DS1; DS2; DS3; DS4; DS5 | 80h |  | 1,600 | 1,600 |  |
