Schedule from MS Project, 2021-11-02 to 2022-01-24, costs in €.

## Calendars

- Estándar: Mon-Fri 09:00-13:00, 15:00-19:00; Sat-Sun off.

## Resources

| Resource | Rate | Notes |
| --- | --- | --- |
| A1 | 30 | Analista |
| A2 | 30 | Analista |
| D1 | 25 | Diseñador |
| D2 | 25 | Diseñador |
| DS1 | 20 | Desarrollador |
| DS2 | 20 | Desarrollador |
| DS3 | 20 | Desarrollador |
| DS4 | 20 | Desarrollador |
| DS5 | 20 | Desarrollador |
| T1 | 25 | Tester |
| T2 | 25 | Tester |
| LOPD | 30 | Experto LOPD |

## Schedule

| ID | WBS | Task | Type | Duration | Start | Finish | Predecessors | Total slack | Free slack | Constraint | Resources | Work | Cost |
| --- | --- | --- | --- | --- | --- | --- | --- | --- | --- | --- | --- | --- | --- |
| 1 | 1 | **Fase 0** |  | 13d? | 2021-11-02 | 2021-11-18 |  | 0d |  |  |  | 36h | 1,080 |
| 2 | 1.1 | Adquisición de Productos |  | 0.5d? | 2021-11-02 | 2021-11-02 |  | 28.25d | 0d |  | A1 [50%]; A2 [50%] | 4h | 120 |
| 3 | 1.2 | Solicitar Presupuesto INICIO | milestone | 0d | 2021-11-02 | 2021-11-02 | 2 | 28.25d | 5.5d |  |  |  |  |
| 4 | 1.3 | Solicitar Presupuesto FIN | milestone | 0d | 2021-11-09 | 2021-11-09 | 3 | 5d | 0d | finish no earlier than 2021-11-09 |  |  |  |
| 5 | 1.4 | Seleccionar Proveedor de cada Producto |  | 8h | 2021-11-10 | 2021-11-10 | 4 | 22.75d | 0d |  | A1; A2 | 16h | 480 |
| 6 | 1.5 | Instalación y Configuración INICIO | milestone | 0d | 2021-11-10 | 2021-11-10 | 5 | 5d |  |  |  |  |  |
| 7 | 1.6 | Instalación y Configuración FIN | milestone | 0d | 2021-11-17 | 2021-11-17 | 6 | 0d |  | finish no earlier than 2021-11-17 |  |  |  |
| 8 | 1.7 | Revisión del Equipamiento |  | 1d? | 2021-11-18 | 2021-11-18 | 7 | 0d |  |  | A1; A2 | 16h | 480 |
| 9 | 2 | **Análisis** |  | 12d? | 2021-11-19 | 2021-12-06 |  | 0d |  |  |  | 204.5h | 6,135 |
| 10 | 2.1 | Peer Review de Requisitos |  | 16h | 2021-12-03 | 2021-12-06 | 11 | 0d |  |  | A1; A2 | 32h | 960 |
| 11 | 2.2 | Elaborar Doc. Usuario |  | 3.75d? | 2021-11-29 | 2021-12-02 | 13 | 0d |  |  | A1; A2 | 60h | 1,800 |
| 12 | 2.3 | **Supervisión ERS** |  | 6.25d? | 2021-11-19 | 2021-11-29 |  | 0d |  |  | LOPD [25%] | 112.5h | 3,375 |
| 13 | 2.3.1 | Elaborar ERS |  | 6.25d? | 2021-11-19 | 2021-11-29 | 8 | 0d |  |  | A1; A2 | 100h | 3,000 |
| 14 | 3 | **Diseño Alto Nivel** |  | 5d? | 2021-12-07 | 2021-12-13 |  | 0d |  |  |  | 160h | 4,000 |
| 15 | 3.1 | Elaborar Arquitectura (diseño alto nivel) |  | 5d? | 2021-12-07 | 2021-12-13 | 10 | 0d |  |  | D1; D2 | 80h | 2,000 |
| 16 | 3.2 | Diseño BBDD (diseño alto nivel) |  | 5d? | 2021-12-07 | 2021-12-13 | 15SS | 0d |  |  | D1; D2 | 80h | 2,000 |
| 17 | 4 | **Diseño Bajo Nivel** |  | 14d? | 2021-12-09 | 2021-12-29 |  | 0d |  |  |  | 272h | 6,800 |
| 18 | 4.1 | Detalle Componentes (diseño bajo nivel) |  | 10d? | 2021-12-09 | 2021-12-23 | 16SS+5%, 15SS+5% | 0d |  | start no earlier than 2021-11-22 | D1; D2 | 160h | 4,000 |
| 19 | 4.2 | Elaborar Doc. Técnico Diseño |  | 5d? | 2021-12-16 | 2021-12-23 | 15SS, 18FF | 0d |  |  | D1; D2 | 80h | 2,000 |
| 20 | 4.3 | Revisión Técnica de Diseño Software (RDS) |  | 16h | 2021-12-23 | 2021-12-27 | 19 | 0d |  |  |  |  |  |
| 21 | 4.4 | Actualizar Doc. Usuario |  | 2d? | 2021-12-27 | 2021-12-29 | 20 | 0d |  |  | D1; D2 | 32h | 800 |
| 22 | 5 | **Implementación** |  | 4d? | 2021-12-29 | 2022-01-04 |  | 0d |  |  |  | 264h | 5,280 |
| 23 | 5.1 | Implementar BBDD |  | 1d? | 2021-12-29 | 2021-12-30 | 21 | 0d |  |  | DS1; DS2; DS3; DS4; DS5 | 40h | 800 |
| 24 | 5.2 | Implementar Unidades |  | 4d? | 2021-12-29 | 2022-01-04 | 23SS | 0d |  |  | DS1; DS2; DS3; DS4; DS5 | 160h | 3,200 |
| 25 | 5.3 | Documentar Unidades |  | 1.6d? | 2021-12-29 | 2021-12-31 | 24SS | 2.4d |  |  | DS1; DS2; DS3; DS4; DS5 | 64h | 1,280 |

| ID | WBS | Task | Type | Duration | Start | Finish | Predecessors | Total slack | Free slack | Constraint | Resources | Work | Cost |
| --- | --- | --- | --- | --- | --- | --- | --- | --- | --- | --- | --- | --- | --- |
| 26 | 6 | **Pruebas de Unidad** |  | 2.4d? | 2021-12-29 | 2021-12-31 |  | 1.6d |  |  |  | 96h | 1,920 |
| 27 | 6.1 | Ejecutar Pruebas de Unidad |  | 2.4d? | 2021-12-29 | 2021-12-31 | 24SS | 1.6d |  |  | DS1; DS2; DS3; DS4; DS5 | 96h | 1,920 |
| 28 | 7 | **Pruebas de Aceptación** |  | 35.73d? | 2021-11-29 | 2022-01-17 |  | 5d |  |  |  | 48h | 1,200 |
| 29 | 7.1 | Elaborar Plan Pruebas Aceptación |  | 3d? | 2021-11-29 | 2021-12-02 | 13 | 37.73d |  |  | T1; T2 | 48h | 1,200 |
| 30 | 7.2 | Ejecutar Plan Pruebas Aceptación |  | 24h | 2022-01-12 | 2022-01-17 | 39 | 0d |  |  |  |  |  |
| 31 | 8 | **Pruebas de Sistema** |  | 20.48d? | 2021-12-14 | 2022-01-11 |  | 9.5d |  |  |  | 78h | 1,950 |
| 32 | 8.1 | Elaborar Plan Pruebas Sistema |  | 3d? | 2021-12-14 | 2021-12-16 | 16, 15 | 26.98d |  |  | T1; T2 | 48h | 1,200 |
| 33 | 8.2 | Ejecutar Plan Pruebas Sistema |  | 1.88d? | 2022-01-07 | 2022-01-11 | 38 | 0d |  |  | T1; T2 | 30h | 750 |
| 34 | 9 | **Pruebas de Integración** |  | 10.5d? | 2021-12-23 | 2022-01-06 |  | 8d |  |  |  | 112h | 2,800 |
| 35 | 9.1 | Elaborar Plan Pruebas Integración |  | 4.5d? | 2021-12-23 | 2021-12-29 | 18 | 17.98d |  |  | T1; T2 | 72h | 1,800 |
| 36 | 9.2 | Ejecutar Plan Pruebas Integración |  | 2.5d? | 2022-01-04 | 2022-01-06 | 27, 25, 24 | 0d |  |  | T1; T2 | 40h | 1,000 |
| 37 | 10 | Test de Usabilidad |  | 8h | 2022-01-07 | 2022-01-10 | 33SS | 0.88d |  |  |  |  |  |
| 38 | 11 | Preparar Paquete de Instalación |  | 0.6d? | 2022-01-07 | 2022-01-07 | 36 | 0d |  |  | DS1; DS2; DS3; DS4; DS5 | 24h | 480 |
| 39 | 12 | Actualizar Doc. Usuario |  | 1.5d? | 2022-01-11 | 2022-01-12 | 33, 37 | 0d |  |  | D1; D2 | 24h | 600 |
| 40 | 13 | Elaborar Plan Instalación & Formación |  | 1.5d? | 2022-01-17 | 2022-01-19 | 30 | 0d |  |  | D1; D2 | 24h | 600 |
| 41 | 14 | Subcontrata Instalación Infraestructura Cliente INICIO | milestone | 0d | 2022-01-19 | 2022-01-19 | 40 | 1.5d | 0d |  |  |  |  |
| 42 | 15 | Subcontrata Instalación Infraestructura Cliente FIN | milestone | 0d | 2022-01-19 | 2022-01-19 | 41 | 1.5d |  | finish no earlier than 2022-01-08 |  |  |  |
| 43 | 16 | Instalación de Cliente |  | 1.5d? | 2022-01-19 | 2022-01-20 | 40 | 0d |  |  | DS1; DS2; DS3; DS4; DS5 | 60h | 1,200 |
| 44 | 17 | Formación |  | 16h | 2022-01-20 | 2022-01-24 | 42, 43 | 0d |  |  |  |  |  |
