Schedule from MS Project, 2021-11-02 to 2022-01-25, costs in €.

## Calendars

- Estándar: Mon-Fri 09:00-13:00, 15:00-19:00; Sat-Sun off.

## Resources

| Resource | Rate | Notes |
| --- | --- | --- |
| A1 | 30 | Analista |
| A2 | 30 | Analista |
| D1 | 25 | Diseñador |
| D2 | 25 | Diseñador |
| DS1 | 20 | Desarrollador |
| DS2 | 20 | Desarrollador |
| DS3 | 20 | Desarrollador |
| DS4 | 20 | Desarrollador |
| DS5 | 20 | Desarrollador |
| T1 | 25 | Tester |
| T2 | 25 | Tester |
| LOPD | 30 | Experto LOPD |

## Schedule

| ID | WBS | Task | Type | Duration | Start | Finish | Predecessors | Total slack | Free slack | Constraint | Resources | Work | Cost |
| --- | --- | --- | --- | --- | --- | --- | --- | --- | --- | --- | --- | --- | --- |
| 1 | 1 | **Fase 0** |  | 13d? | 2021-11-02 | 2021-11-18 |  | 0d |  |  |  | 36h | 1,080 |
| 2 | 1.1 | Adquisición de Productos |  | 0.5d? | 2021-11-02 | 2021-11-02 |  | 28.25d | 0d |  | A1 [50%]; A2 [50%] | 4h | 120 |
| 3 | 1.2 | Solicitar Presupuesto INICIO | milestone | 0d | 2021-11-02 | 2021-11-02 | 2 | 28.25d | 5.5d |  |  |  |  |
| 4 | 1.3 | Solicitar Presupuesto FIN | milestone | 0d | 2021-11-09 | 2021-11-09 | 3 | 5d | 0d | finish no earlier than 2021-11-09 |  |  |  |
| 5 | 1.4 | Seleccionar Proveedor de cada Producto |  | 8h | 2021-11-10 | 2021-11-10 | 4 | 22.75d | 0d |  | A1; A2 | 16h | 480 |
| 6 | 1.5 | Instalación y Configuración INICIO | milestone | 0d | 2021-11-10 | 2021-11-10 | 5 | 5d |  |  |  |  |  |
| 7 | 1.6 | Instalación y Configuración FIN | milestone | 0d | 2021-11-17 | 2021-11-17 | 6 | 0d |  | finish no earlier than 2021-11-17 |  |  |  |
| 8 | 1.7 | Revisión del Equipamiento |  | 1d? | 2021-11-18 | 2021-11-18 | 7 | 0d |  |  | A1; A2 | 16h | 480 |
| 9 | 2 | **Análisis** |  | 13d? | 2021-11-19 | 2021-12-07 |  | 0d |  |  |  | 224h | 6,720 |
| 10 | 2.1 | Peer Review de Requisitos |  | 16h | 2021-12-06 | 2021-12-07 | 11 | 0d |  |  | A1; A2 | 32h | 960 |
| 11 | 2.2 | Elaborar Doc. Usuario |  | 3.75d? | 2021-11-30 | 2021-12-03 | 19 | 0d |  |  | A1; A2 | 60h | 1,800 |
| 12 | 2.3 | Elaborar ERS (1) |  | 1.56d? | 2021-11-19 | 2021-11-22 | 8 | 0d |  |  | A1; A2 | 25h | 750 |
| 13 | 2.4 | Supervisión ERS (1) |  | 1d? | 2021-11-22 | 2021-11-23 | 12 | 45.91d |  |  | LOPD | 8h | 240 |
| 14 | 2.5 | Elaborar ERS (2) |  | 1.56d? | 2021-11-22 | 2021-11-24 | 12 | 0d |  |  | A1; A2 | 25h | 750 |
| 15 | 2.6 | Supervisión ERS (2) |  | 1d? | 2021-11-24 | 2021-11-25 | 14 | 44.35d |  |  | LOPD | 8h | 240 |
| 16 | 2.7 | Elaborar ERS (3) |  | 1.56d? | 2021-11-24 | 2021-11-25 | 14 | 0d |  |  | A1; A2 | 25h | 750 |
| 17 | 2.8 | Supervisión ERS (3) |  | 1d? | 2021-11-25 | 2021-11-26 | 16 | 42.79d |  |  | LOPD | 8h | 240 |
| 18 | 2.9 | Elaborar ERS (4) |  | 1.56d? | 2021-11-25 | 2021-11-29 | 16 | 0d |  |  | A1; A2 | 25h | 750 |
| 19 | 2.10 | Supervisión ERS (4) |  | 1d? | 2021-11-29 | 2021-11-30 | 18 | 0d |  |  | LOPD | 8h | 240 |
| 20 | 3 | **Diseño Alto Nivel** |  | 5d? | 2021-12-08 | 2021-12-14 |  | 0d |  |  |  | 160h | 4,000 |
| 21 | 3.1 | Elaborar Arquitectura (diseño alto nivel) |  | 5d? | 2021-12-08 | 2021-12-14 | 10 | 0d |  |  | D1; D2 | 80h | 2,000 |
| 22 | 3.2 | Diseño BBDD (diseño alto nivel) |  | 5d? | 2021-12-08 | 2021-12-14 | 21SS | 0d |  |  | D1; D2 | 80h | 2,000 |
| 23 | 4 | **Diseño Bajo Nivel** |  | 14d? | 2021-12-10 | 2021-12-30 |  | 0d |  |  |  | 272h | 6,800 |
| 24 | 4.1 | Detalle Componentes (diseño bajo nivel) |  | 10d? | 2021-12-10 | 2021-12-24 | 22SS+5%, 21SS+5% | 0d |  | start no earlier than 2021-11-22 | D1; D2 | 160h | 4,000 |
| 25 | 4.2 | Elaborar Doc. Técnico Diseño |  | 5d? | 2021-12-17 | 2021-12-24 | 21SS, 24FF | 0d |  |  | D1; D2 | 80h | 2,000 |
| 26 | 4.3 | Revisión Técnica de Diseño Software (RDS) |  | 16h | 2021-12-24 | 2021-12-28 | 25 | 0d |  |  |  |  |  |
| 27 | 4.4 | Actualizar Doc. Usuario |  | 2d? | 2021-12-28 | 2021-12-30 | 26 | 0d |  |  | D1; D2 | 32h | 800 |

| ID | WBS | Task | Type | Duration | Start | Finish | Predecessors | Total slack | Free slack | Constraint | Resources | Work | Cost |
| --- | --- | --- | --- | --- | --- | --- | --- | --- | --- | --- | --- | --- | --- |
| 28 | 5 | **Implementación** |  | 4d? | 2021-12-30 | 2022-01-05 |  | 0d |  |  |  | 264h | 5,280 |
| 29 | 5.1 | Implementar BBDD |  | 1d? | 2021-12-30 | 2021-12-31 | 27 | 0d |  |  | DS1; DS2; DS3; DS4; DS5 | 40h | 800 |
| 30 | 5.2 | Implementar Unidades |  | 4d? | 2021-12-30 | 2022-01-05 | 29SS | 0d |  |  | DS1; DS2; DS3; DS4; DS5 | 160h | 3,200 |
| 31 | 5.3 | Documentar Unidades |  | 1.6d? | 2021-12-30 | 2022-01-03 | 30SS | 2.4d |  |  | DS1; DS2; DS3; DS4; DS5 | 64h | 1,280 |
| 32 | 6 | **Pruebas de Unidad** |  | 2.4d? | 2021-12-30 | 2022-01-03 |  | 1.6d |  |  |  | 96h | 1,920 |
| 33 | 6.1 | Ejecutar Pruebas de Unidad |  | 2.4d? | 2021-12-30 | 2022-01-03 | 30SS | 1.6d |  |  | DS1; DS2; DS3; DS4; DS5 | 96h | 1,920 |
| 34 | 7 | **Pruebas de Aceptación** |  | 35.73d? | 2021-11-30 | 2022-01-18 |  | 5d |  |  |  | 48h | 1,200 |
| 35 | 7.1 | Elaborar Plan Pruebas Aceptación |  | 3d? | 2021-11-30 | 2021-12-03 | 19 | 38.23d |  |  | T1; T2 | 48h | 1,200 |
| 36 | 7.2 | Ejecutar Plan Pruebas Aceptación |  | 24h | 2022-01-13 | 2022-01-18 | 45 | 0d |  |  |  |  |  |
| 37 | 8 | **Pruebas de Sistema** |  | 20.48d? | 2021-12-15 | 2022-01-12 |  | 9.5d |  |  |  | 78h | 1,950 |
| 38 | 8.1 | Elaborar Plan Pruebas Sistema |  | 3d? | 2021-12-15 | 2021-12-17 | 22, 21 | 27.48d |  |  | T1; T2 | 48h | 1,200 |
| 39 | 8.2 | Ejecutar Plan Pruebas Sistema |  | 1.88d? | 2022-01-10 | 2022-01-12 | 44 | 0d |  |  | T1; T2 | 30h | 750 |
| 40 | 9 | **Pruebas de Integración** |  | 10.5d? | 2021-12-24 | 2022-01-07 |  | 8d |  |  |  | 112h | 2,800 |
| 41 | 9.1 | Elaborar Plan Pruebas Integración |  | 4.5d? | 2021-12-24 | 2021-12-30 | 24 | 17.98d |  |  | T1; T2 | 72h | 1,800 |
| 42 | 9.2 | Ejecutar Plan Pruebas Integración |  | 2.5d? | 2022-01-05 | 2022-01-07 | 33, 31, 30 | 0d |  |  | T1; T2 | 40h | 1,000 |
| 43 | 10 | Test de Usabilidad |  | 8h | 2022-01-10 | 2022-01-11 | 39SS | 0.88d |  |  |  |  |  |
| 44 | 11 | Preparar Paquete de Instalación |  | 0.6d? | 2022-01-10 | 2022-01-10 | 42 | 0d |  |  | DS1; DS2; DS3; DS4; DS5 | 24h | 480 |
| 45 | 12 | Actualizar Doc. Usuario |  | 1.5d? | 2022-01-12 | 2022-01-13 | 39, 43 | 0d |  |  | D1; D2 | 24h | 600 |
| 46 | 13 | Elaborar Plan Instalación & Formación |  | 1.5d? | 2022-01-18 | 2022-01-20 | 36 | 0d |  |  | D1; D2 | 24h | 600 |
| 47 | 14 | Subcontrata Instalación Infraestructura Cliente INICIO | milestone | 0d | 2022-01-20 | 2022-01-20 | 46 | 1.5d | 0d |  |  |  |  |
| 48 | 15 | Subcontrata Instalación Infraestructura Cliente FIN | milestone | 0d | 2022-01-20 | 2022-01-20 | 47 | 1.5d |  | finish no earlier than 2022-01-08 |  |  |  |
| 49 | 16 | Instalación de Cliente |  | 1.5d? | 2022-01-20 | 2022-01-21 | 46 | 0d |  |  | DS1; DS2; DS3; DS4; DS5 | 60h | 1,200 |
| 50 | 17 | Formación |  | 16h | 2022-01-21 | 2022-01-25 | 48, 49 | 0d |  |  |  |  |  |
