Schedule from MS Project, 2021-11-02 to 2022-03-16, costs in €.

## Calendars

- Estándar: Mon-Fri 09:00-13:00, 15:00-19:00; Sat-Sun off.

## Resources

| Resource | Rate | Cost per use | Notes |
| --- | --- | --- | --- |
| A1 | 30 |  | Analista |
| A2 | 30 |  | Analista |
| D1 | 25 |  | Diseñador |
| D2 | 25 |  | Diseñador |
| DS1 | 20 |  | Desarrollador |
| DS2 | 20 |  | Desarrollador |
| DS3 | 20 |  | Desarrollador |
| DS4 | 20 |  | Desarrollador |
| DS5 | 20 |  | Desarrollador |
| T1 | 25 |  | Tester |
| T2 | 25 |  | Tester |
| LOPD | 30 |  | Experto LOPD |
| AMZN | 2.5 |  | Servidor Amazon |
| Toner |  | 0.4 | Toner |
| Papel |  | 0.01 | Papel |
| Transporte |  | 80 | Transporte |

## Schedule

| ID | WBS | Task | Type | Duration | Start | Finish | Predecessors | Total slack | Free slack | Constraint | Resources | Work | Cost |
| --- | --- | --- | --- | --- | --- | --- | --- | --- | --- | --- | --- | --- | --- |
| 1 | 1 | **Fase 0** |  | 13d? | 2021-11-02 | 2021-11-18 |  | 0d |  |  |  | 36h | 13,580 |
| 2 | 1.1 | Adquisición de Productos |  | 0.5d? | 2021-11-02 | 2021-11-02 |  | 0.5d | 0d |  | A1 [50%]; A2 [50%] | 4h | 120 |
| 3 | 1.2 | Solicitar Presupuesto INICIO | milestone | 0d | 2021-11-02 | 2021-11-02 | 2 | 0.5d |  |  |  |  |  |
| 4 | 1.3 | Solicitar Presupuesto FIN | milestone | 0d | 2021-11-09 | 2021-11-09 | 3FS+5d | 0d |  | finish no earlier than 2021-11-09 |  |  |  |
| 5 | 1.4 | Seleccionar Proveedor de cada Producto |  | 8h | 2021-11-10 | 2021-11-10 | 4 | 0d |  |  | A1; A2 | 16h | 480 |
| 6 | 1.5 | Instalación y Configuración INICIO | milestone | 0d | 2021-11-10 | 2021-11-10 | 5 | 0d |  |  |  |  | 6,250 |
| 7 | 1.6 | Instalación y Configuración FIN | milestone | 0d | 2021-11-17 | 2021-11-17 | 6FS+5d | 0d |  | finish no earlier than 2021-11-17 |  |  | 6,250 |
| 8 | 1.7 | Revisión del Equipamiento |  | 1d? | 2021-11-18 | 2021-11-18 | 7 | 0d |  |  | A1; A2 | 16h | 480 |
| 9 | 2 | **Diseño Alto Nivel** |  | 25d? | 2021-12-08 | 2022-01-12 |  | 0d |  |  |  | 200h | 5,000.82 |
| 10 | 2.1 | Elaborar Arquitectura (diseño alto nivel) |  | 25d? | 2021-12-08 | 2022-01-12 | 48 | 0d |  |  | D1 [40%] | 80h | 2,000 |
| 11 | 2.2 | Elaborar Doc. Técnico Diseño I |  | 25d? | 2021-12-08 | 2022-01-12 | 10FF | 45.48d |  |  | D1 [10%]; Papel [2500%]; Toner [2500%] | 20h | 500.41 |
| 12 | 2.3 | Diseño BBDD (diseño alto nivel) |  | 25d? | 2021-12-08 | 2022-01-12 | 10SS | 0d |  |  | D2 [40%] | 80h | 2,000 |
| 13 | 2.4 | Elaborar Doc. Técnico Diseño II |  | 25d? | 2021-12-08 | 2022-01-12 | 12FF | 45.48d |  |  | D2 [10%]; Papel [2500%]; Toner [2500%] | 20h | 500.41 |
| 14 | 3 | **Diseño Bajo Nivel** |  | 29d? | 2021-12-24 | 2022-02-03 |  | 0d |  |  |  | 264h | 6,600.82 |
| 15 | 3.1 | Detalle Componentes (diseño bajo nivel) |  | 25d? | 2021-12-24 | 2022-01-28 | 12SS+5%, 10SS+5% | 0d |  | start no earlier than 2021-11-22 | D1 [40%]; D2 [40%] | 160h | 4,000 |
| 16 | 3.2 | Elaborar Doc. Técnico Diseño III |  | 25d? | 2021-12-24 | 2022-01-28 | 15FF | 28.98d | 0d |  | D1 [10%]; D2 [10%]; Papel [5000%]; Toner [5000%] | 40h | 1,000.41 |
| 17 | 3.3 | Revisión Técnica de Diseño Software (RDS) |  | 16h | 2022-01-28 | 2022-02-01 | 16 | 28.98d | 0d |  | D1; D2 | 32h | 800 |
| 18 | 3.4 | Actualizar Doc. Usuario |  | 2d? | 2022-02-01 | 2022-02-03 | 17 | 28.98d |  |  | D1; D2; Papel [10000%]; Toner [10000%] | 32h | 800.41 |
| 19 | 4 | **Implementación** |  | 9d? | 2022-02-04 | 2022-02-17 |  | 0d |  |  |  | 264h | 5,280 |
| 20 | 4.1 | Implementar BBDD |  | 5d? | 2022-02-04 | 2022-02-11 | 36 | 23.48d |  |  | DS1 | 40h | 800 |
| 21 | 4.2 | Implementar Unidades I |  | 5d? | 2022-02-04 | 2022-02-11 | 36 | 0d |  |  | DS2 [50%]; DS3 [50%]; DS4 [50%]; DS5 [50%] | 80h | 1,600 |
| 22 | 4.3 | Implementar Unidades II |  | 4d? | 2022-02-11 | 2022-02-17 | 21 | 0d |  |  | DS1 [50%]; DS2 [50%]; DS3 [50%]; DS4 [50%]; DS5 [50%] | 80h | 1,600 |
| 23 | 4.4 | Documentar Unidades I |  | 5d? | 2022-02-04 | 2022-02-11 | 21SS | 0d |  |  | DS2 [20%]; DS3 [20%]; DS4 [20%]; DS5 [20%] | 32h | 640 |
| 24 | 4.5 | Documentar Unidades II |  | 4d? | 2022-02-11 | 2022-02-17 | 23 | 0d |  |  | DS1 [20%]; DS2 [20%]; DS3 [20%]; DS4 [20%]; DS5 [20%] | 32h | 640 |

| ID | WBS | Task | Type | Duration | Start | Finish | Predecessors | Total slack | Constraint | Resources | Work | Cost |
| --- | --- | --- | --- | --- | --- | --- | --- | --- | --- | --- | --- | --- |
| 25 | 5 | **Pruebas de Unidad** |  | 9d? | 2022-02-04 | 2022-02-17 |  | 0d |  |  | 96h | 1,920 |
| 26 | 5.1 | Ejecutar Pruebas de Unidad I |  | 5d? | 2022-02-04 | 2022-02-11 | 21SS | 0d |  | DS2 [30%]; DS3 [30%]; DS4 [30%]; DS5 [30%] | 48h | 960 |
| 27 | 5.2 | Ejecutar Pruebas de Unidad II |  | 4d? | 2022-02-11 | 2022-02-17 | 26 | 0d |  | DS1 [30%]; DS2 [30%]; DS3 [30%]; DS4 [30%]; DS5 [30%] | 48h | 960 |
| 28 | 6 | **Pruebas de Aceptación** |  | 66.22d? | 2021-11-30 | 2022-03-02 |  | 10d |  |  | 48h | 1,200 |
| 29 | 6.1 | Elaborar Plan Pruebas Aceptación |  | 3d? | 2021-11-30 | 2021-12-03 | 49SS, 51 | 73.22d |  | T1; T2 | 48h | 1,200 |
| 30 | 6.2 | Ejecutar Plan Pruebas Aceptación |  | 24h | 2022-02-25 | 2022-03-02 | 41 | 0d |  |  |  |  |
| 31 | 7 | **Pruebas de Sistema** |  | 30.98d? | 2022-01-12 | 2022-02-24 |  | 14.5d |  |  | 78.15h | 1,950.38 |
| 32 | 7.1 | Elaborar Plan Pruebas Sistema |  | 3d? | 2022-01-12 | 2022-01-17 | 12, 10 | 42.48d |  | T1; T2 | 48h | 1,200 |
| 33 | 7.2 | **Servidor Amazon** |  | 1.88d? | 2022-02-22 | 2022-02-24 |  | 0d |  | AMZN [1%] | 30.15h | 750.38 |
| 34 | 7.2.1 | Ejecutar Plan Pruebas Sistema |  | 1.88d? | 2022-02-22 | 2022-02-24 | 40 | 0d |  | T1; T2 | 30h | 750 |
| 35 | 8 | **Pruebas de Integración** |  | 16d? | 2022-01-28 | 2022-02-21 |  | 0d |  |  | 112.2h | 2,800.5 |
| 36 | 8.1 | Elaborar Plan Pruebas Integración |  | 4.5d? | 2022-01-28 | 2022-02-04 | 15 | 0d |  | T1; T2 | 72h | 1,800 |
| 37 | 8.2 | **Servidor Amazon** |  | 2.5d? | 2022-02-17 | 2022-02-21 |  | 0d |  | AMZN [1%] | 40.2h | 1,000.5 |
| 38 | 8.2.1 | Ejecutar Plan Pruebas Integración |  | 2.5d? | 2022-02-17 | 2022-02-21 | 27, 24, 22 | 0d |  | T1; T2 | 40h | 1,000 |
| 39 | 9 | Test de Usabilidad |  | 8h | 2022-02-22 | 2022-02-23 | 34SS | 0.88d |  |  |  |  |
| 40 | 10 | Preparar Paquete de Instalación |  | 0.6d? | 2022-02-21 | 2022-02-22 | 38 | 0d |  | DS1; DS2; DS3; DS4; DS5 | 24h | 480 |
| 41 | 11 | Actualizar Doc. Usuario |  | 1.5d? | 2022-02-24 | 2022-02-25 | 34, 39 | 0d |  | D1; D2; Papel [10000%]; Toner [10000%] | 24h | 600.41 |
| 42 | 12 | Elaborar Plan Instalación & Formación |  | 1.5d? | 2022-03-02 | 2022-03-04 | 30 | 0d |  | D1; D2 | 24h | 600 |
| 43 | 13 | Subcontrata Instalación Infraestructura Cliente INICIO | milestone | 0d | 2022-03-04 | 2022-03-04 | 42 | 0d |  |  |  | 2,400 |
| 44 | 14 | Subcontrata Instalación Infraestructura Cliente FIN | milestone | 0d | 2022-03-11 | 2022-03-11 | 43FS+40h | 0d | finish no earlier than 2022-01-08 |  |  | 1,600 |
| 45 | 15 | Instalación de Cliente |  | 1.5d? | 2022-03-11 | 2022-03-14 | 44 | 0d |  | DS1; DS2; DS3; DS4; DS5; Transporte [500%] | 60h | 1,280 |
| 46 | 16 | Formación |  | 16h | 2022-03-14 | 2022-03-16 | 45 | 0d |  | DS1; DS2; DS3; DS4; DS5 | 80h | 1,600 |
| 47 | 17 | **Análisis** |  | 13.25d? | 2021-11-19 | 2021-12-08 |  | 0d |  |  | 202h | 6,060.82 |
| 48 | 17.1 | Peer Review de Requisitos |  | 16h | 2021-12-06 | 2021-12-08 | 49 | 0d |  | A1; A2 | 32h | 960 |
| 49 | 17.2 | Elaborar Doc. Usuario |  | 3.75d? | 2021-11-30 | 2021-12-06 | 51 | 0d |  | A1; A2; Papel [10000%]; Toner [10000%] | 60h | 1,800.41 |
| 50 | 17.3 | Elaborar ERS |  | 6.25d? | 2021-11-19 | 2021-11-29 | 8 | 0d |  | A1; A2; Papel [10000%]; Toner [10000%] | 100h | 3,000.41 |
| 51 | 17.4 | Supervisión ERS |  | 1.25d? | 2021-11-29 | 2021-11-30 | 50 | 0d |  | LOPD | 10h | 300 |
